# ctools

Schedule from MS Project, 2019-04-08 to 2022-08-19.

## Calendars

- Standard: Mon-Fri 08:00-12:00, 13:00-17:00; Sat-Sun off.

## Resources

| Resource |
| --- |
| Morpheus |
| Rualark |
| Shegolev |

## Schedule

| ID | WBS | Task | Duration | Start | Finish | Predecessors | Total slack | Free slack | Resources | Work |
| --- | --- | --- | --- | --- | --- | --- | --- | --- | --- | --- |
| 1 | 1 | **Повышение качества** | 60d | 2019-04-08 | 2019-06-28 |  | 820d |  |  | 1920h |
| 2 | 1.1 | Тестирование и устранение недостатков в текущем функционале сайта Composer Tools и алгоритмов озвучивания | 60d | 2019-04-08 | 2019-06-28 |  | 650d |  | Rualark; Shegolev | 960h |
| 3 | 1.2 | Тестирование и устранение недостатков в текущем функционале анализа контрапункта | 60d | 2019-04-08 | 2019-06-28 |  | 650d |  | Rualark; Shegolev | 960h |
| 4 | 2 | **Подготовить Ctools к коммерческому использованию** | 73d | 2019-04-08 | 2019-07-17 |  | 807d |  |  | 824h |
| 5 | 2.1 | Убрать исходный код Mgen из открытого доступа. Перевести репозитарий на новый хостинг. | 5d | 2019-04-08 | 2019-04-12 |  | 647d | 0d | Rualark | 40h |
| 6 | 2.2 | Переименовать Mgen и Composer Tools, перевести на новый домен | 5d | 2019-04-15 | 2019-04-19 | 5 | 807d | 0d | Morpheus; Rualark; Shegolev | 120h |
| 7 | 2.3 | Мигрировать заявки на новую платформу с waffle | 3d | 2019-04-22 | 2019-04-24 | 6 | 807d | 0d | Rualark | 24h |
| 8 | 2.4 | Ревизия и доработка сайта | 5d | 2019-04-25 | 2019-05-01 | 7 | 807d | 0d |  |  |
| 9 | 2.5 | Ревизия и доработка документации | 5d | 2019-05-02 | 2019-05-08 | 8 | 807d | 0d | Morpheus; Rualark | 80h |
| 10 | 2.6 | Купить и настроить второй сервер | 10d | 2019-05-09 | 2019-05-22 | 9 | 807d | 0d | Rualark | 80h |
| 11 | 2.7 | Разработка и внедрение SLA | 10d | 2019-05-23 | 2019-06-05 | 10 | 807d | 0d | Morpheus; Rualark | 160h |
| 12 | 2.8 | Внедрение подписок и бесплатного режима. Определение цен. | 10d | 2019-06-06 | 2019-06-19 | 11 | 807d | 0d | Morpheus; Rualark | 160h |
| 13 | 2.9 | Построить новую систему тестирования вместо Appveyor | 20d | 2019-06-20 | 2019-07-17 | 12 | 807d |  | Rualark | 160h |
| 14 | 3 | **Привлечение клиентов** | 20d | 2019-06-20 | 2019-07-17 |  | 807d |  |  | 160h |
| 15 | 3.1 | Разработка программы привлечения клиентов | 20d | 2019-06-20 | 2019-07-17 | 12 | 807d |  | Morpheus | 160h |
| 16 | 4 | **Интеграция с первыми партнерами** | 120d | 2019-04-08 | 2019-09-20 |  | 0d |  |  | 1760h |
| 17 | 4.1 | Формирование дерева возможных партнеров и каналов сбыта | 20d | 2019-04-08 | 2019-05-03 |  | 0d |  | Morpheus | 160h |
| 18 | 4.2 | Подготовка презентации и видео для партнеров | 10d | 2019-05-06 | 2019-05-17 | 17 | 0d |  | Morpheus | 80h |
| 19 | 4.3 | Установка контактов с первыми партнерами | 20d | 2019-05-20 | 2019-06-14 | 18 | 0d |  | Morpheus | 160h |
| 20 | 4.4 | Заключение договора с первыми партнерами | 20d | 2019-06-17 | 2019-07-12 | 19 | 50d |  | Morpheus | 160h |
| 21 | 4.5 | Разработка протокола интеграции | 10d | 2019-06-17 | 2019-06-28 | 19 | 0d |  | Rualark | 80h |
| 22 | 4.6 | Интеграция с первыми партнерами | 20d | 2019-07-01 | 2019-07-26 | 21 | 0d |  | Rualark | 160h |
| 23 | 4.7 | Внедрение системы заявок на обслуживание | 20d | 2019-06-17 | 2019-07-12 | 19 | 50d |  | Morpheus; Rualark | 320h |
| 24 | 4.8 | Опытная эксплуатация с первыми партнерами | 40d | 2019-07-29 | 2019-09-20 | 22 | 0d |  | Morpheus; Rualark | 640h |

| ID | WBS | Task | Duration | Start | Finish | Predecessors | Total slack | Resources | Work |
| --- | --- | --- | --- | --- | --- | --- | --- | --- | --- |
| 25 | 5 | **Новый функционал** | 760d | 2019-09-23 | 2022-08-19 |  | 0d |  | 17440h |
| 26 | 5.1 | **Анализ гармонии** | 280d | 2019-09-23 | 2020-10-16 |  | 0d |  | 4480h |
| 27 | 5.1.1 | Разработка | 200d | 2019-09-23 | 2020-06-26 | 16 | 0d | Rualark; Shegolev | 3200h |
| 28 | 5.1.2 | Тестирование | 80d | 2020-06-29 | 2020-10-16 | 27 | 480d | Rualark; Shegolev | 1280h |
| 29 | 5.2 | **Генерация многоголосного контрапункта** | 160d | 2020-06-29 | 2021-02-05 |  | 0d |  | 2560h |
| 30 | 5.2.1 | Разработка | 100d | 2020-06-29 | 2020-11-13 | 27 | 0d | Rualark; Shegolev | 1600h |
| 31 | 5.2.2 | Тестирование | 60d | 2020-11-16 | 2021-02-05 | 30 | 400d | Rualark; Shegolev | 960h |
| 32 | 5.3 | **Коррекция многоголосного контрапункта** | 80d | 2020-11-16 | 2021-03-05 |  | 0d |  | 1280h |
| 33 | 5.3.1 | Разработка | 40d | 2020-11-16 | 2021-01-08 | 30 | 0d | Rualark; Shegolev | 640h |
| 34 | 5.3.2 | Тестирование | 40d | 2021-01-11 | 2021-03-05 | 33 | 380d | Rualark; Shegolev | 640h |
| 35 | 5.4 | **Линия баса** | 140d | 2021-01-11 | 2021-07-23 |  | 0d |  | 3200h |
| 36 | 5.4.1 | Разработка анализа | 50d | 2021-01-11 | 2021-03-19 | 33 | 0d | Rualark; Shegolev | 800h |
| 37 | 5.4.2 | Тестирование анализа | 30d | 2021-03-22 | 2021-04-30 | 36 | 340d | Rualark; Shegolev | 480h |
| 38 | 5.4.3 | Разработка генерации | 40d | 2021-03-22 | 2021-05-14 | 36 | 0d | Rualark; Shegolev | 640h |
| 39 | 5.4.4 | Тестирование генерации | 30d | 2021-05-17 | 2021-06-25 | 38 | 300d | Rualark; Shegolev | 480h |
| 40 | 5.4.5 | Разработка коррекции | 30d | 2021-05-17 | 2021-06-25 | 38 | 0d | Rualark; Shegolev | 480h |
| 41 | 5.4.6 | Тестирование коррекции | 20d | 2021-06-28 | 2021-07-23 | 40 | 280d | Rualark; Shegolev | 320h |
| 42 | 5.5 | **Генерация гармонии** | 130d | 2021-06-28 | 2021-12-24 |  | 0d |  | 2080h |
| 43 | 5.5.1 | Разработка | 80d | 2021-06-28 | 2021-10-15 | 40 | 0d | Rualark; Shegolev | 1280h |
| 44 | 5.5.2 | Тестирование | 50d | 2021-10-18 | 2021-12-24 | 43 | 170d | Rualark; Shegolev | 800h |
| 45 | 5.6 | **Анализ оркестровки** | 140d | 2021-10-18 | 2022-04-29 |  | 0d |  | 2240h |
| 46 | 5.6.1 | Разработка | 80d | 2021-10-18 | 2022-02-04 | 43 | 0d | Rualark; Shegolev | 1280h |
| 47 | 5.6.2 | Тестирование | 60d | 2022-02-07 | 2022-04-29 | 46 | 80d | Rualark; Shegolev | 960h |
| 48 | 5.7 | **Озвучивание MusicXML файлов** | 140d | 2022-02-07 | 2022-08-19 |  | 0d |  | 1600h |
| 49 | 5.7.1 | Разработка | 80d | 2022-02-07 | 2022-05-27 | 46 | 0d | Rualark | 640h |
| 50 | 5.7.2 | Тестирование | 60d | 2022-05-30 | 2022-08-19 | 49 | 0d | Rualark; Shegolev | 960h |
